Task ID,Task Link,Task Type,Task Name,Task Content,Status,Date Created,Date Created Text,Due Date,Due Date Text,Start Date,Start Date Text,Parent ID,Subtasks IDs,Attachments,Assignees,Tags,Priority,List Name,Folder Name/Path,Space Name,Time Estimated,Time Estimated Text,Checklists,Comments,Assigned Comments,Time Spent,Time Spent Text,Rolled Up Time,Rolled Up Time Text,Home Location ID,Home Location,Other Location IDs,Other Locations
86bbh6tbz,https://app.clickup.com/t/86bbh6tbz,"Task","Existing & Future Conditions- Draft Report","",complete,1787173403596,"8/19/2026, 2:03:23 PM PDT",1786705200000,"8/14/2026, 4:00:00 AM PDT",1777633200000,"5/1/2026, 4:00:00 AM PDT",86bbh427w,"86bbh6umc","[]","[Paul Sharman]","[]",null,"SMTP Tasks","[""SMTP""]","WSDOT SMPT and TCRS Space","","","{}","[]","0", "",,NaN,,"901419287287","WSDOT SMPT and TCRS Space > SMTP > SMTP Tasks","",""
86bbh4vmx,https://app.clickup.com/t/86bbh4vmx,"Task","Data Request Spreadsheet","",complete,1787169238516,"8/19/2026, 12:53:58 PM PDT",1784113200000,"7/15/2026, 4:00:00 AM PDT",1782903600000,"7/1/2026, 4:00:00 AM PDT",86bbh4pu8,"","[]","[]","[]",null,"SMTP Tasks","[""SMTP""]","WSDOT SMPT and TCRS Space","","","{}","[]","0", "",,NaN,,"901419287287","WSDOT SMPT and TCRS Space > SMTP > SMTP Tasks","",""
86bbh4pqg,https://app.clickup.com/t/86bbh4pqg,"Task","Revenue Forecasts","",complete,1787168874419,"8/19/2026, 12:47:54 PM PDT",1789729200000,"9/18/2026, 4:00:00 AM PDT",1780311600000,"6/1/2026, 4:00:00 AM PDT",86bbh427t,"86bbh4qey,86bbhpkm5,86bbhpmnk,86bbhpp95,86bbhppq7,86bbhpq2a,86bbhr12b,86bbhr21f,86bbhr2cy","[]","[]","[]",null,"SMTP Tasks","[""SMTP""]","WSDOT SMPT and TCRS Space","","","{}","[]","0", "",,NaN,,"901419287287","WSDOT SMPT and TCRS Space > SMTP > SMTP Tasks","",""
86bbh4pu8,https://app.clickup.com/t/86bbh4pu8,"Task","Needs Analysis","",complete,1787168881034,"8/19/2026, 12:48:01 PM PDT",1789729200000,"9/18/2026, 4:00:00 AM PDT",1782903600000,"7/1/2026, 4:00:00 AM PDT",86bbh427t,"86bbh4vrr,86bbh4vvz,86bbh4vyk,86bbhpqwh,86bbhpt2k","[]","[]","[]",null,"SMTP Tasks","[""SMTP""]","WSDOT SMPT and TCRS Space","","","{}","[]","0", "",,NaN,,"901419287287","WSDOT SMPT and TCRS Space > SMTP > SMTP Tasks","",""
86bbhp46z,https://app.clickup.com/t/86bbhp46z,"Task","Existing Conditions- WSDOT Review","",complete,1787246579960,"8/20/2026, 10:22:59 AM PDT",1787914800000,"8/28/2026, 4:00:00 AM PDT",,"",86bbh427w,"86bbhp67p","[]","[Paul Sharman]","[]",null,"SMTP Tasks","[""SMTP""]","WSDOT SMPT and TCRS Space","","","{}","[]","0", "",,NaN,,"901419287287","WSDOT SMPT and TCRS Space > SMTP > SMTP Tasks","",""
86bbhuhna,https://app.clickup.com/t/86bbhuhna,"Task","Compliance Matrix","",complete,1787257209598,"8/20/2026, 1:20:09 PM PDT",1789729200000,"9/18/2026, 4:00:00 AM PDT",1780657200000,"6/5/2026, 4:00:00 AM PDT",86bbh427v,"","[]","[]","[]",null,"SMTP Tasks","[""SMTP""]","WSDOT SMPT and TCRS Space","","","{}","[]","0", "",,NaN,,"901419287287","WSDOT SMPT and TCRS Space > SMTP > SMTP Tasks","",""
86bbh427u,https://app.clickup.com/t/86bbh427u,"Task","Task 2: Work Plan Development","",complete,1787167263505,"8/19/2026, 12:21:03 PM PDT",1782817200000,"6/30/2026, 4:00:00 AM PDT",1777633200000,"5/1/2026, 4:00:00 AM PDT",null,"","[]","[]","[task order 1]",null,"SMTP Tasks","[""SMTP""]","WSDOT SMPT and TCRS Space","","","{}","[]","0", "",,NaN,,"901419287287","WSDOT SMPT and TCRS Space > SMTP > SMTP Tasks","",""
86bbhum7x,https://app.clickup.com/t/86bbhum7x,"Task","Engagement Work Plan","",complete,1787257421340,"8/20/2026, 1:23:41 PM PDT",1782817200000,"6/30/2026, 4:00:00 AM PDT",1777633200000,"5/1/2026, 4:00:00 AM PDT",86bbh427u,"","[]","[]","[]",null,"SMTP Tasks","[""SMTP""]","WSDOT SMPT and TCRS Space","","","{}","[]","0", "",,NaN,,"901419287287","WSDOT SMPT and TCRS Space > SMTP > SMTP Tasks","",""
86bbhujkt,https://app.clickup.com/t/86bbhujkt,"Task","WSDOT Review","",complete,1787257297288,"8/20/2026, 1:21:37 PM PDT",1788519600000,"9/4/2026, 4:00:00 AM PDT",1787914800000,"8/28/2026, 4:00:00 AM PDT",86bbhuhna,"","[]","[]","[]",null,"SMTP Tasks","[""SMTP""]","WSDOT SMPT and TCRS Space","","","{}","[]","0", "",,NaN,,"901419287287","WSDOT SMPT and TCRS Space > SMTP > SMTP Tasks","",""
86bbh4284,https://app.clickup.com/t/86bbh4284,"Task","Technical Task Work Plan","",complete,1787167263902,"8/19/2026, 12:21:03 PM PDT",1780657200000,"6/5/2026, 4:00:00 AM PDT",1777633200000,"5/1/2026, 4:00:00 AM PDT",86bbh427u,"","[]","[]","[task order 1]",1,"SMTP Tasks","[""SMTP""]","WSDOT SMPT and TCRS Space","","","{}","[]","0", "",,NaN,,"901419287287","WSDOT SMPT and TCRS Space > SMTP > SMTP Tasks","",""
86bbhujxq,https://app.clickup.com/t/86bbhujxq,"milestone","Final Compliance Matrix","",complete,1787257327345,"8/20/2026, 1:22:07 PM PDT",1789124400000,"9/11/2026, 4:00:00 AM PDT",,"",86bbhuhna,"","[]","[]","[]",null,"SMTP Tasks","[""SMTP""]","WSDOT SMPT and TCRS Space","","","{}","[]","0", "",,NaN,,"901419287287","WSDOT SMPT and TCRS Space > SMTP > SMTP Tasks","",""
86bbhuj9j,https://app.clickup.com/t/86bbhuj9j,"milestone","Draft Compliance Matrix","",complete,1787257257433,"8/20/2026, 1:20:57 PM PDT",1787914800000,"8/28/2026, 4:00:00 AM PDT",,"",86bbhuhna,"","[]","[]","[]",null,"SMTP Tasks","[""SMTP""]","WSDOT SMPT and TCRS Space","","","{}","[]","0", "",,NaN,,"901419287287","WSDOT SMPT and TCRS Space > SMTP > SMTP Tasks","",""
86bbh427v,https://app.clickup.com/t/86bbh427v,"Task","Task 1: Project Management","",complete,1787167263514,"8/19/2026, 12:21:03 PM PDT",1830168000000,"12/30/2027, 4:00:00 AM PST",1780657200000,"6/5/2026, 4:00:00 AM PDT",null,"86bbhpdt3","[]","[Leslie Langley]","[task order 1]",3,"SMTP Tasks","[""SMTP""]","WSDOT SMPT and TCRS Space","","","{}","[]","0", "",,NaN,,"901419287287","WSDOT SMPT and TCRS Space > SMTP > SMTP Tasks","",""
86bckpvdv,https://app.clickup.com/t/86bckpvdv,"Task","bi-weekly meetings - agenda and notes","",complete,1792177788488,"10/16/2026, 12:09:48 PM PDT",,"",,"",86bbh427v,"","[]","[Leslie Langley]","[]",null,"SMTP Tasks","[""SMTP""]","WSDOT SMPT and TCRS Space","","","{}","[]","0", "",,NaN,,"901419287287","WSDOT SMPT and TCRS Space > SMTP > SMTP Tasks","",""
86bbh4283,https://app.clickup.com/t/86bbh4283,"Task","Final Reporting Work Plan","",complete,1787167263901,"8/19/2026, 12:21:03 PM PDT",1790766000000,"9/30/2026, 4:00:00 AM PDT",1788174000000,"8/31/2026, 4:00:00 AM PDT",86bbh427u,"86bbhun43,86bbhunc9","[]","[]","[task order 1]",2,"SMTP Tasks","[""SMTP""]","WSDOT SMPT and TCRS Space","","","{}","[]","0", "",,NaN,,"901419287287","WSDOT SMPT and TCRS Space > SMTP > SMTP Tasks","",""
86bbh427w,https://app.clickup.com/t/86bbh427w,"Task","Task 4: Existing and Future Conditions","",in progress,1787167263517,"8/19/2026, 12:21:03 PM PDT",1790766000000,"9/30/2026, 4:00:00 AM PDT",1785754800000,"8/3/2026, 4:00:00 AM PDT",null,"86bbh6thy","[]","[Paul Sharman]","[]",3,"SMTP Tasks","[""SMTP""]","WSDOT SMPT and TCRS Space","","","{}","[]","0", "",,NaN,,"901419287287","WSDOT SMPT and TCRS Space > SMTP > SMTP Tasks","",""
86bbhpdt3,https://app.clickup.com/t/86bbhpdt3,"Task","SMTP Monthly (Regions & Divisions)","",in progress,1787247322653,"8/20/2026, 10:35:22 AM PDT",1830254400000,"12/31/2027, 4:00:00 AM PST",1780311600000,"6/1/2026, 4:00:00 AM PDT",86bbh427v,"","[]","[]","[]",null,"SMTP Tasks","[""SMTP""]","WSDOT SMPT and TCRS Space","","","{}","[]","0", "",,NaN,,"901419287287","WSDOT SMPT and TCRS Space > SMTP > SMTP Tasks","",""
86bbh4fxf,https://app.clickup.com/t/86bbh4fxf,"Task","Task 6: Documentation and Delivery","",in progress,1787168292433,"8/19/2026, 12:38:12 PM PDT",1830168000000,"12/30/2027, 4:00:00 AM PST",1777633200000,"5/1/2026, 4:00:00 AM PDT",null,"86bbhv2gj,86bbhv354,86bbhv3qt,86bbhv3yr","[]","[]","[]",null,"SMTP Tasks","[""SMTP""]","WSDOT SMPT and TCRS Space","","","{}","[]","0", "",,NaN,,"901419287287","WSDOT SMPT and TCRS Space > SMTP > SMTP Tasks","",""
86bbhp67p,https://app.clickup.com/t/86bbhp67p,"Task","Existing Conditions- Consolidated WSDOT Comments","",in progress,1787246777739,"8/20/2026, 10:26:17 AM PDT",,"",,"",86bbhp46z,"","[]","[]","[]",null,"SMTP Tasks","[""SMTP""]","WSDOT SMPT and TCRS Space","","","{}","[]","0", "",,NaN,,"901419287287","WSDOT SMPT and TCRS Space > SMTP > SMTP Tasks","",""
86bbh6vm6,https://app.clickup.com/t/86bbh6vm6,"Task","Kickoff & Initial Outreach","",in progress,1787173632752,"8/19/2026, 2:07:12 PM PDT",1788174000000,"8/31/2026, 4:00:00 AM PDT",1782903600000,"7/1/2026, 4:00:00 AM PDT",86bbh470b,"","[]","[]","[]",null,"SMTP Tasks","[""SMTP""]","WSDOT SMPT and TCRS Space","","","{}","[]","0", "",,NaN,,"901419287287","WSDOT SMPT and TCRS Space > SMTP > SMTP Tasks","",""
86bbh4qey,https://app.clickup.com/t/86bbh4qey,"Task","Draft Revenue Forecasting","",in progress,1787168950712,"8/19/2026, 12:49:10 PM PDT",1790334000000,"9/25/2026, 4:00:00 AM PDT",1780311600000,"6/1/2026, 4:00:00 AM PDT",86bbh4pqg,"","[]","[]","[]",null,"SMTP Tasks","[""SMTP""]","WSDOT SMPT and TCRS Space","","","{}","[]","0", "",,NaN,,"901419287287","WSDOT SMPT and TCRS Space > SMTP > SMTP Tasks","",""
86bbh6thy,https://app.clickup.com/t/86bbh6thy,"Task","Existing & Future Conditions- Final Report","",in progress,1787173422599,"8/19/2026, 2:03:42 PM PDT",1789729200000,"9/18/2026, 4:00:00 AM PDT",1780311600000,"6/1/2026, 4:00:00 AM PDT",86bbh427w,"86bbhp6g6","[]","[Paul Sharman]","[]",null,"SMTP Tasks","[""SMTP""]","WSDOT SMPT and TCRS Space","","","{}","[]","0", "",,NaN,,"901419287287","WSDOT SMPT and TCRS Space > SMTP > SMTP Tasks","",""
86bbhvdbx,https://app.clickup.com/t/86bbhvdbx,"Task","Priorities & Tradeoffs","",in progress,1787259875203,"8/20/2026, 2:04:35 PM PDT",1798718400000,"12/31/2026, 4:00:00 AM PST",1790852400000,"10/1/2026, 4:00:00 AM PDT",86bbh470b,"","[]","[]","[]",null,"SMTP Tasks","[""SMTP""]","WSDOT SMPT and TCRS Space","","","{}","[]","0", "",,NaN,,"901419287287","WSDOT SMPT and TCRS Space > SMTP > SMTP Tasks","",""
86bbhv3qt,https://app.clickup.com/t/86bbhv3qt,"Task","Programmatic Priorities","",in progress,1787258971628,"8/20/2026, 1:49:31 PM PDT",1806663600000,"4/2/2027, 4:00:00 AM PDT",1792407600000,"10/19/2026, 4:00:00 AM PDT",86bbh4fxf,"","[]","[]","[]",null,"SMTP Tasks","[""SMTP""]","WSDOT SMPT and TCRS Space","","","{}","[]","0", "",,NaN,,"901419287287","WSDOT SMPT and TCRS Space > SMTP > SMTP Tasks","",""
86bbh470b,https://app.clickup.com/t/86bbh470b,"Task","Task 5: Community & Partner Engagement","",in progress,1787167625071,"8/19/2026, 12:27:05 PM PDT",1830168000000,"12/30/2027, 4:00:00 AM PST",1780311600000,"6/1/2026, 4:00:00 AM PDT",null,"86bbh6vm6,86bbh6vqk,86bbhvdbx,86bbhvdm2,86bbhvdty","[]","[]","[]",null,"SMTP Tasks","[""SMTP""]","WSDOT SMPT and TCRS Space","","","{}","[]","0", "",,NaN,,"901419287287","WSDOT SMPT and TCRS Space > SMTP > SMTP Tasks","",""
86bbh6umc,https://app.clickup.com/t/86bbh6umc,"Task","Draft of Existing Conditions","",in progress,1787173528538,"8/19/2026, 2:05:28 PM PDT",1786705200000,"8/14/2026, 4:00:00 AM PDT",1786705200000,"8/14/2026, 4:00:00 AM PDT",86bbh6tbz,"","[]","[]","[]",null,"SMTP Tasks","[""SMTP""]","WSDOT SMPT and TCRS Space","","","{}","[]","0", "",,NaN,,"901419287287","WSDOT SMPT and TCRS Space > SMTP > SMTP Tasks","",""
86bbh790p,https://app.clickup.com/t/86bbh790p,"Task","SMTP Weekly PM Check In","",in progress,1787174814274,"8/19/2026, 2:26:54 PM PDT",1830168000000,"12/30/2027, 4:00:00 AM PST",1777892400000,"5/4/2026, 4:00:00 AM PDT",86bbh72n6,"","[]","[]","[]",null,"SMTP Tasks","[""SMTP""]","WSDOT SMPT and TCRS Space","","","{}","[]","0", "",,NaN,,"901419287287","WSDOT SMPT and TCRS Space > SMTP > SMTP Tasks","",""
86bbh72n6,https://app.clickup.com/t/86bbh72n6,"Task","Meetings","",in progress,1787174102348,"8/19/2026, 2:15:02 PM PDT",1830168000000,"12/30/2027, 4:00:00 AM PST",1777633200000,"5/1/2026, 4:00:00 AM PDT",null,"86bbh732v,86bbh77ru,86bbh790p","[]","[]","[]",null,"SMTP Tasks","[""SMTP""]","WSDOT SMPT and TCRS Space","","","{}","[]","0", "",,NaN,,"901419287287","WSDOT SMPT and TCRS Space > SMTP > SMTP Tasks","",""
86bbh4q0h,https://app.clickup.com/t/86bbh4q0h,"Task","Risk Analysis & Mitigation","",in progress,1787168900207,"8/19/2026, 12:48:20 PM PDT",1789729200000,"9/18/2026, 4:00:00 AM PDT",1782903600000,"7/1/2026, 4:00:00 AM PDT",86bbh427t,"86bbh6abp,86bbh6afg,86bbh6dm0,86bbh6drw,86bbh6eud,86bbhr9ap,86bbhr9zh,86bbhra5e","[]","[]","[]",null,"SMTP Tasks","[""SMTP""]","WSDOT SMPT and TCRS Space","","","{}","[]","0", "",,NaN,,"901419287287","WSDOT SMPT and TCRS Space > SMTP > SMTP Tasks","",""
86bbh77ru,https://app.clickup.com/t/86bbh77ru,"Task","SMTP Monthly (SPACE Team)","",in progress,1787174676613,"8/19/2026, 2:24:36 PM PDT",1830168000000,"12/30/2027, 4:00:00 AM PST",1788260400000,"9/1/2026, 4:00:00 AM PDT",86bbh72n6,"","[]","[]","[]",null,"SMTP Tasks","[""SMTP""]","WSDOT SMPT and TCRS Space","","","{}","[]","0", "",,NaN,,"901419287287","WSDOT SMPT and TCRS Space > SMTP > SMTP Tasks","",""
86bbh427t,https://app.clickup.com/t/86bbh427t,"Task","Task 3: Financial Assessment","",in progress,1787167263498,"8/19/2026, 12:21:03 PM PDT",1798714800000,"12/31/2026, 3:00:00 AM PST",1788260400000,"9/1/2026, 4:00:00 AM PDT",null,"86bbh4q0h","[]","[]","[task order 1]",null,"SMTP Tasks","[""SMTP""]","WSDOT SMPT and TCRS Space","","","{""Checklist"":[]}","[]","0", "",,NaN,,"901419287287","WSDOT SMPT and TCRS Space > SMTP > SMTP Tasks","",""
86bbh732v,https://app.clickup.com/t/86bbh732v,"Task","EAG Bi-Monthly","",in progress,1787174123543,"8/19/2026, 2:15:23 PM PDT",1830168000000,"12/30/2027, 4:00:00 AM PST",1790852400000,"10/1/2026, 4:00:00 AM PDT",86bbh72n6,"","[]","[]","[]",null,"SMTP Tasks","[""SMTP""]","WSDOT SMPT and TCRS Space","","","{}","[]","0", "",,NaN,,"901419287287","WSDOT SMPT and TCRS Space > SMTP > SMTP Tasks","",""
86bbh6abp,https://app.clickup.com/t/86bbh6abp,"milestone","Draft Risk Analysis","",in progress,1787172336508,"8/19/2026, 1:45:36 PM PDT",1789124400000,"9/11/2026, 4:00:00 AM PDT",1785582000000,"8/1/2026, 4:00:00 AM PDT",86bbh4q0h,"","[]","[]","[]",null,"SMTP Tasks","[""SMTP""]","WSDOT SMPT and TCRS Space","","","{}","[]","0", "",,NaN,,"901419287287","WSDOT SMPT and TCRS Space > SMTP > SMTP Tasks","",""
86bbh6vqk,https://app.clickup.com/t/86bbh6vqk,"Task","Deep Listening","",in progress,1787173641654,"8/19/2026, 2:07:21 PM PDT",1793444400000,"10/31/2026, 4:00:00 AM PDT",1790852400000,"10/1/2026, 4:00:00 AM PDT",86bbh470b,"","[]","[]","[]",null,"SMTP Tasks","[""SMTP""]","WSDOT SMPT and TCRS Space","","","{""Checklist"":[]}","[]","0", "",,NaN,,"901419287287","WSDOT SMPT and TCRS Space > SMTP > SMTP Tasks","",""
86bbhppq7,https://app.clickup.com/t/86bbhppq7,"Task","Revenue Forecast Revisions","",to do,1787247947953,"8/20/2026, 10:45:47 AM PDT",1788174000000,"8/31/2026, 4:00:00 AM PDT",1787742000000,"8/26/2026, 4:00:00 AM PDT",86bbh4pqg,"","[]","[]","[]",null,"SMTP Tasks","[""SMTP""]","WSDOT SMPT and TCRS Space","","","{}","[]","0", "",,NaN,,"901419287287","WSDOT SMPT and TCRS Space > SMTP > SMTP Tasks","",""
86bbhpkm5,https://app.clickup.com/t/86bbhpkm5,"Task","Initial WSDOT Review of Draft Revenue Forecast (Tim/Jeremy)","",to do,1787247710264,"8/20/2026, 10:41:50 AM PDT",1787655600000,"8/25/2026, 4:00:00 AM PDT",,"",86bbh4pqg,"","[]","[]","[]",null,"SMTP Tasks","[""SMTP""]","WSDOT SMPT and TCRS Space","","","{}","[]","0", "",,NaN,,"901419287287","WSDOT SMPT and TCRS Space > SMTP > SMTP Tasks","",""
86bbhr21f,https://app.clickup.com/t/86bbhr21f,"Task","WSDOT Review of 2nd Revenue Forecast Draft","",to do,1787251219279,"8/20/2026, 11:40:19 AM PDT",1788865200000,"9/8/2026, 4:00:00 AM PDT",1788174000000,"8/31/2026, 4:00:00 AM PDT",86bbh4pqg,"","[]","[]","[]",null,"SMTP Tasks","[""SMTP""]","WSDOT SMPT and TCRS Space","","","{}","[]","0", "",,NaN,,"901419287287","WSDOT SMPT and TCRS Space > SMTP > SMTP Tasks","",""
86bbhr9ap,https://app.clickup.com/t/86bbhr9ap,"Task","WSDOT Review of 2nd Risk Analysis Draft","",to do,1787251730045,"8/20/2026, 11:48:50 AM PDT",1788865200000,"9/8/2026, 4:00:00 AM PDT",,"",86bbh4q0h,"","[]","[]","[]",null,"SMTP Tasks","[""SMTP""]","WSDOT SMPT and TCRS Space","","","{}","[]","0", "",,NaN,,"901419287287","WSDOT SMPT and TCRS Space > SMTP > SMTP Tasks","",""
86bbhunc9,https://app.clickup.com/t/86bbhunc9,"milestone","Final Task Order for Procurement","",to do,1787257534270,"8/20/2026, 1:25:34 PM PDT",1790766000000,"9/30/2026, 4:00:00 AM PDT",,"",86bbh4283,"","[]","[]","[]",null,"SMTP Tasks","[""SMTP""]","WSDOT SMPT and TCRS Space","","","{}","[]","0", "",,NaN,,"901419287287","WSDOT SMPT and TCRS Space > SMTP > SMTP Tasks","",""
86bbhv2gj,https://app.clickup.com/t/86bbhv2gj,"Task","Annotated Outline","",to do,1787258808919,"8/20/2026, 1:46:48 PM PDT",1792148400000,"10/16/2026, 4:00:00 AM PDT",1789988400000,"9/21/2026, 4:00:00 AM PDT",86bbh4fxf,"86bbhv2nq,86bbhv2ym,86bbhv30z","[]","[]","[]",null,"SMTP Tasks","[""SMTP""]","WSDOT SMPT and TCRS Space","","","{}","[]","0", "",,NaN,,"901419287287","WSDOT SMPT and TCRS Space > SMTP > SMTP Tasks","",""
86bbhr12b,https://app.clickup.com/t/86bbhr12b,"milestone","2nd Draft Revenue Forecast","",to do,1787251120923,"8/20/2026, 11:38:40 AM PDT",1788174000000,"8/31/2026, 4:00:00 AM PDT",,"",86bbh4pqg,"","[]","[]","[]",null,"SMTP Tasks","[""SMTP""]","WSDOT SMPT and TCRS Space","","","{}","[]","0", "",,NaN,,"901419287287","WSDOT SMPT and TCRS Space > SMTP > SMTP Tasks","",""
86bbhv88h,https://app.clickup.com/t/86bbhv88h,"Task","Revised Draft 1","",to do,1787259473143,"8/20/2026, 1:57:53 PM PDT",,"",,"",86bbhv3yr,"","[]","[]","[]",null,"SMTP Tasks","[""SMTP""]","WSDOT SMPT and TCRS Space","","","{}","[]","0", "",,NaN,,"901419287287","WSDOT SMPT and TCRS Space > SMTP > SMTP Tasks","",""
86bbh6afg,https://app.clickup.com/t/86bbh6afg,"Task","Initial WSDOT Review of Draft Risk Analysis (Tim/Jeremy)","",to do,1787172345140,"8/19/2026, 1:45:45 PM PDT",1789470000000,"9/15/2026, 4:00:00 AM PDT",1789470000000,"9/15/2026, 4:00:00 AM PDT",86bbh4q0h,"","[]","[]","[]",null,"SMTP Tasks","[""SMTP""]","WSDOT SMPT and TCRS Space","","","{}","[]","0", "",,NaN,,"901419287287","WSDOT SMPT and TCRS Space > SMTP > SMTP Tasks","",""
86bbh6drw,https://app.clickup.com/t/86bbh6drw,"milestone","Consolidated WSDOT Comments on Initial Risk Analysis","",to do,1787172527702,"8/19/2026, 1:48:47 PM PDT",1789470000000,"9/15/2026, 4:00:00 AM PDT",1789470000000,"9/15/2026, 4:00:00 AM PDT",86bbh4q0h,"","[]","[]","[]",null,"SMTP Tasks","[""SMTP""]","WSDOT SMPT and TCRS Space","","","{""Checklist"":[]}","[]","0", "",,NaN,,"901419287287","WSDOT SMPT and TCRS Space > SMTP > SMTP Tasks","",""
86bbhvb9v,https://app.clickup.com/t/86bbhvb9v,"Task","Final Review & Adoption","",to do,1787259702735,"8/20/2026, 2:01:42 PM PDT",,"",,"",86bbhv3yr,"","[]","[]","[]",null,"SMTP Tasks","[""SMTP""]","WSDOT SMPT and TCRS Space","","","{}","[]","0", "",,NaN,,"901419287287","WSDOT SMPT and TCRS Space > SMTP > SMTP Tasks","",""
86bbhpmnk,https://app.clickup.com/t/86bbhpmnk,"milestone","Consolidated WSDOT Comments on Initial Draft Revenue Forecast","",to do,1787247767439,"8/20/2026, 10:42:47 AM PDT",1787655600000,"8/25/2026, 4:00:00 AM PDT",1787310000000,"8/21/2026, 4:00:00 AM PDT",86bbh4pqg,"","[]","[]","[]",null,"SMTP Tasks","[""SMTP""]","WSDOT SMPT and TCRS Space","","","{}","[]","0", "",,NaN,,"901419287287","WSDOT SMPT and TCRS Space > SMTP > SMTP Tasks","",""
86bbhvdm2,https://app.clickup.com/t/86bbhvdm2,"Task","Feedback & Groundtruthing","",to do,1787259895808,"8/20/2026, 2:04:55 PM PDT",1803643200000,"2/26/2027, 4:00:00 AM PST",1799064000000,"1/4/2027, 4:00:00 AM PST",86bbh470b,"","[]","[]","[]",null,"SMTP Tasks","[""SMTP""]","WSDOT SMPT and TCRS Space","","","{}","[]","0", "",,NaN,,"901419287287","WSDOT SMPT and TCRS Space > SMTP > SMTP Tasks","",""
86bbhr2cy,https://app.clickup.com/t/86bbhr2cy,"Task","Final Revenue Revisions","",to do,1787251258890,"8/20/2026, 11:40:58 AM PDT",1789729200000,"9/18/2026, 4:00:00 AM PDT",1788865200000,"9/8/2026, 4:00:00 AM PDT",86bbh4pqg,"","[]","[]","[]",null,"SMTP Tasks","[""SMTP""]","WSDOT SMPT and TCRS Space","","","{}","[]","0", "",,NaN,,"901419287287","WSDOT SMPT and TCRS Space > SMTP > SMTP Tasks","",""
86bbhra5e,https://app.clickup.com/t/86bbhra5e,"milestone","Final Risk Analysis","",to do,1787251807279,"8/20/2026, 11:50:07 AM PDT",1789729200000,"9/18/2026, 4:00:00 AM PDT",,"",86bbh4q0h,"","[]","[]","[]",null,"SMTP Tasks","[""SMTP""]","WSDOT SMPT and TCRS Space","","","{}","[]","0", "",,NaN,,"901419287287","WSDOT SMPT and TCRS Space > SMTP > SMTP Tasks","",""
86bbhun43,https://app.clickup.com/t/86bbhun43,"milestone","Draft Task Order for WSDOT Review","",to do,1787257515939,"8/20/2026, 1:25:15 PM PDT",1789729200000,"9/18/2026, 4:00:00 AM PDT",,"",86bbh4283,"","[]","[]","[]",null,"SMTP Tasks","[""SMTP""]","WSDOT SMPT and TCRS Space","","","{}","[]","0", "",,NaN,,"901419287287","WSDOT SMPT and TCRS Space > SMTP > SMTP Tasks","",""
86bbhp6g6,https://app.clickup.com/t/86bbhp6g6,"milestone","Existing Conditions Final Document","",to do,1787246801079,"8/20/2026, 10:26:41 AM PDT",1789729200000,"9/18/2026, 4:00:00 AM PDT",1787914800000,"8/28/2026, 4:00:00 AM PDT",86bbh6thy,"","[]","[Paul Sharman]","[]",null,"SMTP Tasks","[""SMTP""]","WSDOT SMPT and TCRS Space","","","{}","[]","0", "",,NaN,,"901419287287","WSDOT SMPT and TCRS Space > SMTP > SMTP Tasks","",""
86bbh4vyk,https://app.clickup.com/t/86bbh4vyk,"milestone","Final Needs Assessment","",to do,1787169262528,"8/19/2026, 12:54:22 PM PDT",1789729200000,"9/18/2026, 4:00:00 AM PDT",1785409200000,"7/30/2026, 4:00:00 AM PDT",86bbh4pu8,"","[]","[]","[]",null,"SMTP Tasks","[""SMTP""]","WSDOT SMPT and TCRS Space","","","{}","[]","0", "",,NaN,,"901419287287","WSDOT SMPT and TCRS Space > SMTP > SMTP Tasks","",""
86bbhpp95,https://app.clickup.com/t/86bbhpp95,"milestone","Initial Draft Revenue Forecast","",to do,1787247904967,"8/20/2026, 10:45:04 AM PDT",1787310000000,"8/21/2026, 4:00:00 AM PDT",,"",86bbh4pqg,"","[]","[]","[]",null,"SMTP Tasks","[""SMTP""]","WSDOT SMPT and TCRS Space","","","{}","[]","0", "",,NaN,,"901419287287","WSDOT SMPT and TCRS Space > SMTP > SMTP Tasks","",""
86bbhpq2a,https://app.clickup.com/t/86bbhpq2a,"milestone","Final Revenue Forecast","",to do,1787247973840,"8/20/2026, 10:46:13 AM PDT",,"",,"",86bbh4pqg,"","[]","[]","[]",null,"SMTP Tasks","[""SMTP""]","WSDOT SMPT and TCRS Space","","","{}","[]","0", "",,NaN,,"901419287287","WSDOT SMPT and TCRS Space > SMTP > SMTP Tasks","",""
86bbhv2ym,https://app.clickup.com/t/86bbhv2ym,"milestone","WSDOT Review","",to do,1787258864893,"8/20/2026, 1:47:44 PM PDT",1791543600000,"10/9/2026, 4:00:00 AM PDT",1790938800000,"10/2/2026, 4:00:00 AM PDT",86bbhv2gj,"","[]","[]","[]",null,"SMTP Tasks","[""SMTP""]","WSDOT SMPT and TCRS Space","","","{}","[]","0", "",,NaN,,"901419287287","WSDOT SMPT and TCRS Space > SMTP > SMTP Tasks","",""
86bbhpqwh,https://app.clickup.com/t/86bbhpqwh,"Task","WSDOT Review of Draft Needs Assessment","",to do,1787248070684,"8/20/2026, 10:47:50 AM PDT",1790334000000,"9/25/2026, 4:00:00 AM PDT",,"",86bbh4pu8,"","[]","[]","[]",null,"SMTP Tasks","[""SMTP""]","WSDOT SMPT and TCRS Space","","","{}","[]","0", "",,NaN,,"901419287287","WSDOT SMPT and TCRS Space > SMTP > SMTP Tasks","",""
86bbhr9zh,https://app.clickup.com/t/86bbhr9zh,"Task","Final Risk Revisions","",to do,1787251788238,"8/20/2026, 11:49:48 AM PDT",1789729200000,"9/18/2026, 4:00:00 AM PDT",1788865200000,"9/8/2026, 4:00:00 AM PDT",86bbh4q0h,"","[]","[]","[]",null,"SMTP Tasks","[""SMTP""]","WSDOT SMPT and TCRS Space","","","{}","[]","0", "",,NaN,,"901419287287","WSDOT SMPT and TCRS Space > SMTP > SMTP Tasks","",""
86bbhv30z,https://app.clickup.com/t/86bbhv30z,"milestone","Approved Annotated Outline","",to do,1787258878262,"8/20/2026, 1:47:58 PM PDT",1792148400000,"10/16/2026, 4:00:00 AM PDT",,"",86bbhv2gj,"","[]","[]","[]",null,"SMTP Tasks","[""SMTP""]","WSDOT SMPT and TCRS Space","","","{}","[]","0", "",,NaN,,"901419287287","WSDOT SMPT and TCRS Space > SMTP > SMTP Tasks","",""
86bbhv354,https://app.clickup.com/t/86bbhv354,"Task","Vignettes/Personas","",to do,1787258898162,"8/20/2026, 1:48:18 PM PDT",1798718400000,"12/31/2026, 4:00:00 AM PST",1790852400000,"10/1/2026, 4:00:00 AM PDT",86bbh4fxf,"86bbhv38a,86bbhv3bp,86bbhv3fq","[]","[]","[]",null,"SMTP Tasks","[""SMTP""]","WSDOT SMPT and TCRS Space","","","{}","[]","0", "",,NaN,,"901419287287","WSDOT SMPT and TCRS Space > SMTP > SMTP Tasks","",""
86bbhv38a,https://app.clickup.com/t/86bbhv38a,"milestone","Draft Vignettes/Personas","",to do,1787258912318,"8/20/2026, 1:48:32 PM PDT",1794830400000,"11/16/2026, 4:00:00 AM PST",,"",86bbhv354,"","[]","[]","[]",null,"SMTP Tasks","[""SMTP""]","WSDOT SMPT and TCRS Space","","","{}","[]","0", "",,NaN,,"901419287287","WSDOT SMPT and TCRS Space > SMTP > SMTP Tasks","",""
86bbhv3bp,https://app.clickup.com/t/86bbhv3bp,"Task","WSDOT Review","",to do,1787258922108,"8/20/2026, 1:48:42 PM PDT",1796385600000,"12/4/2026, 4:00:00 AM PST",1794830400000,"11/16/2026, 4:00:00 AM PST",86bbhv354,"","[]","[]","[]",null,"SMTP Tasks","[""SMTP""]","WSDOT SMPT and TCRS Space","","","{}","[]","0", "",,NaN,,"901419287287","WSDOT SMPT and TCRS Space > SMTP > SMTP Tasks","",""
86bbhv3fq,https://app.clickup.com/t/86bbhv3fq,"milestone","Final Vingettes/Personas","",to do,1787258937027,"8/20/2026, 1:48:57 PM PDT",1797595200000,"12/18/2026, 4:00:00 AM PST",,"",86bbhv354,"","[]","[]","[]",null,"SMTP Tasks","[""SMTP""]","WSDOT SMPT and TCRS Space","","","{}","[]","0", "",,NaN,,"901419287287","WSDOT SMPT and TCRS Space > SMTP > SMTP Tasks","",""
86bbhv3yr,https://app.clickup.com/t/86bbhv3yr,"Task","Final Plan Documentation","",to do,1787259004047,"8/20/2026, 1:50:04 PM PDT",,"",,"",86bbh4fxf,"86bbhv42w,86bbhv7uu,86bbhv83p,86bbhv88h,86bbhva8x,86bbhvavx,86bbhvazb,86bbhvb9v,86bbhvbfc","[]","[]","[]",null,"SMTP Tasks","[""SMTP""]","WSDOT SMPT and TCRS Space","","","{}","[]","0", "",,NaN,,"901419287287","WSDOT SMPT and TCRS Space > SMTP > SMTP Tasks","",""
86bbhv42w,https://app.clickup.com/t/86bbhv42w,"Task","Draft Plan for WSDOT Review","",to do,1787259023975,"8/20/2026, 1:50:23 PM PDT",,"",,"",86bbhv3yr,"","[]","[]","[]",null,"SMTP Tasks","[""SMTP""]","WSDOT SMPT and TCRS Space","","","{}","[]","0", "",,NaN,,"901419287287","WSDOT SMPT and TCRS Space > SMTP > SMTP Tasks","",""
86bbhv7uu,https://app.clickup.com/t/86bbhv7uu,"Task","Plan Revisions (Round 1)","",to do,1787259446627,"8/20/2026, 1:57:26 PM PDT",,"",,"",86bbhv3yr,"","[]","[]","[]",null,"SMTP Tasks","[""SMTP""]","WSDOT SMPT and TCRS Space","","","{}","[]","0", "",,NaN,,"901419287287","WSDOT SMPT and TCRS Space > SMTP > SMTP Tasks","",""
86bbhv83p,https://app.clickup.com/t/86bbhv83p,"Task","Plan Revisions (Round 2)","",to do,1787259462834,"8/20/2026, 1:57:42 PM PDT",,"",,"",86bbhv3yr,"","[]","[]","[]",null,"SMTP Tasks","[""SMTP""]","WSDOT SMPT and TCRS Space","","","{}","[]","0", "",,NaN,,"901419287287","WSDOT SMPT and TCRS Space > SMTP > SMTP Tasks","",""
86bbhva8x,https://app.clickup.com/t/86bbhva8x,"Task","Tribal & Agency Review Draft (Draft #2)","",to do,1787259614830,"8/20/2026, 2:00:14 PM PDT",,"",,"",86bbhv3yr,"","[]","[]","[]",null,"SMTP Tasks","[""SMTP""]","WSDOT SMPT and TCRS Space","","","{}","[]","0", "",,NaN,,"901419287287","WSDOT SMPT and TCRS Space > SMTP > SMTP Tasks","",""
86bbhvavx,https://app.clickup.com/t/86bbhvavx,"Task","Final Draft","",to do,1787259644997,"8/20/2026, 2:00:44 PM PDT",,"",,"",86bbhv3yr,"","[]","[]","[]",null,"SMTP Tasks","[""SMTP""]","WSDOT SMPT and TCRS Space","","","{}","[]","0", "",,NaN,,"901419287287","WSDOT SMPT and TCRS Space > SMTP > SMTP Tasks","",""
86bbhvazb,https://app.clickup.com/t/86bbhvazb,"Task","Public Review","",to do,1787259661487,"8/20/2026, 2:01:01 PM PDT",,"",,"",86bbhv3yr,"","[]","[]","[]",null,"SMTP Tasks","[""SMTP""]","WSDOT SMPT and TCRS Space","","","{}","[]","0", "",,NaN,,"901419287287","WSDOT SMPT and TCRS Space > SMTP > SMTP Tasks","",""
86bbhvbfc,https://app.clickup.com/t/86bbhvbfc,"Task","Plan Publication & FHWA Transmittal","",to do,1787259718504,"8/20/2026, 2:01:58 PM PDT",,"",,"",86bbhv3yr,"","[]","[]","[]",null,"SMTP Tasks","[""SMTP""]","WSDOT SMPT and TCRS Space","","","{}","[]","0", "",,NaN,,"901419287287","WSDOT SMPT and TCRS Space > SMTP > SMTP Tasks","",""
86bbhpt2k,https://app.clickup.com/t/86bbhpt2k,"milestone","WSDOT Direction on Needs Approach","",to do,1787248184291,"8/20/2026, 10:49:44 AM PDT",1789038000000,"9/10/2026, 4:00:00 AM PDT",,"",86bbh4pu8,"","[]","[]","[]",null,"SMTP Tasks","[""SMTP""]","WSDOT SMPT and TCRS Space","","","{}","[]","0", "",,NaN,,"901419287287","WSDOT SMPT and TCRS Space > SMTP > SMTP Tasks","",""
86bbh6dm0,https://app.clickup.com/t/86bbh6dm0,"Task","Risk Analysis Revisions","",to do,1787172516679,"8/19/2026, 1:48:36 PM PDT",1789988400000,"9/21/2026, 4:00:00 AM PDT",1789470000000,"9/15/2026, 4:00:00 AM PDT",86bbh4q0h,"","[]","[]","[]",null,"SMTP Tasks","[""SMTP""]","WSDOT SMPT and TCRS Space","","","{}","[]","0", "",,NaN,,"901419287287","WSDOT SMPT and TCRS Space > SMTP > SMTP Tasks","",""
86bbh6eud,https://app.clickup.com/t/86bbh6eud,"milestone","2nd Draft Risk Analysis","",to do,1787172596924,"8/19/2026, 1:49:56 PM PDT",1789988400000,"9/21/2026, 4:00:00 AM PDT",1789556400000,"9/16/2026, 4:00:00 AM PDT",86bbh4q0h,"","[]","[]","[]",null,"SMTP Tasks","[""SMTP""]","WSDOT SMPT and TCRS Space","","","{}","[]","0", "",,NaN,,"901419287287","WSDOT SMPT and TCRS Space > SMTP > SMTP Tasks","",""
86bbhv2nq,https://app.clickup.com/t/86bbhv2nq,"milestone","Draft Annotated Outline","",to do,1787258830357,"8/20/2026, 1:47:10 PM PDT",1790938800000,"10/2/2026, 4:00:00 AM PDT",,"",86bbhv2gj,"","[]","[]","[]",null,"SMTP Tasks","[""SMTP""]","WSDOT SMPT and TCRS Space","","","{}","[]","0", "",,NaN,,"901419287287","WSDOT SMPT and TCRS Space > SMTP > SMTP Tasks","",""
86bbhvdty,https://app.clickup.com/t/86bbhvdty,"Task","Finalization","",to do,1787259908567,"8/20/2026, 2:05:08 PM PDT",1811502000000,"5/28/2027, 4:00:00 AM PDT",1803902400000,"3/1/2027, 4:00:00 AM PST",86bbh470b,"","[]","[]","[]",null,"SMTP Tasks","[""SMTP""]","WSDOT SMPT and TCRS Space","","","{}","[]","0", "",,NaN,,"901419287287","WSDOT SMPT and TCRS Space > SMTP > SMTP Tasks","",""
86bbrng11,https://app.clickup.com/t/86bbrng11,"Task","Untitled","",to do,1788294216195,"9/1/2026, 1:23:36 PM PDT",,"",,"",null,"","[]","[]","[]",null,"SMTP Tasks","[""SMTP""]","WSDOT SMPT and TCRS Space","","","{}","[]","0", "",,NaN,,"901419287287","WSDOT SMPT and TCRS Space > SMTP > SMTP Tasks","",""
86bbh4vvz,https://app.clickup.com/t/86bbh4vvz,"milestone","Draft Needs Assessment","",to do,1787169255822,"8/19/2026, 12:54:15 PM PDT",1789124400000,"9/11/2026, 4:00:00 AM PDT",1784113200000,"7/15/2026, 4:00:00 AM PDT",86bbh4pu8,"","[]","[]","[]",null,"SMTP Tasks","[""SMTP""]","WSDOT SMPT and TCRS Space","","","{}","[]","0", "",,NaN,,"901419287287","WSDOT SMPT and TCRS Space > SMTP > SMTP Tasks","",""
86bbh4vrr,https://app.clickup.com/t/86bbh4vrr,"Task","Development of WSDOT-wide Needs","",to do,1787169247454,"8/19/2026, 12:54:07 PM PDT",1789383600000,"9/14/2026, 4:00:00 AM PDT",1782903600000,"7/1/2026, 4:00:00 AM PDT",86bbh4pu8,"","[]","[]","[]",null,"SMTP Tasks","[""SMTP""]","WSDOT SMPT and TCRS Space","","","{}","[]","0", "",,NaN,,"901419287287","WSDOT SMPT and TCRS Space > SMTP > SMTP Tasks","",""
86bbh2h7y,https://app.clickup.com/t/86bbh2h7y,"Task","Final Approach and Methodology","",complete,1787164008133,"8/19/2026, 11:26:48 AM PDT",1781521200000,"6/15/2026, 4:00:00 AM PDT",1780657200000,"6/5/2026, 4:00:00 AM PDT",86bbh2brd,"","[]","[]","[]",null,"TCRS Tasks","[""TCRS""]","WSDOT SMPT and TCRS Space","","","{}","[]","0", "",,NaN,,"901419283607","WSDOT SMPT and TCRS Space > TCRS > TCRS Tasks","",""
86bbh2z3k,https://app.clickup.com/t/86bbh2z3k,"Task","Final Converge/Divergence Memo","",complete,1787164936185,"8/19/2026, 11:42:16 AM PDT",1785495600000,"7/31/2026, 4:00:00 AM PDT",1783076400000,"7/3/2026, 4:00:00 AM PDT",86bbh2c88,"","[]","[]","[task order 1]",null,"TCRS Tasks","[""TCRS""]","WSDOT SMPT and TCRS Space","","","{}","[]","0", "",,NaN,,"901419283607","WSDOT SMPT and TCRS Space > TCRS > TCRS Tasks","",""
86bbh2v7r,https://app.clickup.com/t/86bbh2v7r,"Task","Draft Converge/Divergence Memo","",complete,1787164707249,"8/19/2026, 11:38:27 AM PDT",1783076400000,"7/3/2026, 4:00:00 AM PDT",1780657200000,"6/5/2026, 4:00:00 AM PDT",86bbh2c88,"","[]","[]","[task order 1]",null,"TCRS Tasks","[""TCRS""]","WSDOT SMPT and TCRS Space","","","{}","[]","0", "",,NaN,,"901419283607","WSDOT SMPT and TCRS Space > TCRS > TCRS Tasks","",""
86bbqy9wk,https://app.clickup.com/t/86bbqy9wk,"Task","Meeting to review postprocessing tools","",complete,1788212800518,"8/31/2026, 2:46:40 PM PDT",1791543600000,"10/9/2026, 4:00:00 AM PDT",1790593200000,"9/28/2026, 4:00:00 AM PDT",86bbh3a51,"","[]","[]","[]",null,"TCRS Tasks","[""TCRS""]","WSDOT SMPT and TCRS Space","","","{}","[]","0", "",,NaN,,"901419283607","WSDOT SMPT and TCRS Space > TCRS > TCRS Tasks","",""
86bbrr1gp,https://app.clickup.com/t/86bbrr1gp,"Task","Update Budgets","",complete,1788301073717,"9/1/2026, 3:17:53 PM PDT",,"",,"",86bbh2c1f,"","[]","[]","[]",null,"TCRS Tasks","[""TCRS""]","WSDOT SMPT and TCRS Space","","","{}","[]","0", "",,NaN,,"901419283607","WSDOT SMPT and TCRS Space > TCRS > TCRS Tasks","",""
86bbh2rh7,https://app.clickup.com/t/86bbh2rh7,"Task","Draft Work Plan","",complete,1787164546694,"8/19/2026, 11:35:46 AM PDT",1787742000000,"8/26/2026, 4:00:00 AM PDT",1780657200000,"6/5/2026, 4:00:00 AM PDT",86bbh2c1f,"","[]","[]","[task order 1]",1,"TCRS Tasks","[""TCRS""]","WSDOT SMPT and TCRS Space","","","{}","[]","0", "",,NaN,,"901419283607","WSDOT SMPT and TCRS Space > TCRS > TCRS Tasks","",""
86bbh2ta2,https://app.clickup.com/t/86bbh2ta2,"Task","Final Work Plan","",complete,1787164592108,"8/19/2026, 11:36:32 AM PDT",1788174000000,"8/31/2026, 4:00:00 AM PDT",1787742000000,"8/26/2026, 4:00:00 AM PDT",86bbh2c1f,"","[]","[]","[task order 1]",2,"TCRS Tasks","[""TCRS""]","WSDOT SMPT and TCRS Space","","","{}","[]","0", "",,NaN,,"901419283607","WSDOT SMPT and TCRS Space > TCRS > TCRS Tasks","",""
86bbh2c88,https://app.clickup.com/t/86bbh2c88,"Task","TO1 - Task 3: Quick Start Activities","",complete,1787163630311,"8/19/2026, 11:20:30 AM PDT",1788174000000,"8/31/2026, 4:00:00 AM PDT",1780657200000,"6/5/2026, 4:00:00 AM PDT",null,"","[]","[Leslie Langley]","[task order 1]",null,"TCRS Tasks","[""TCRS""]","WSDOT SMPT and TCRS Space","","","{""Checklist"":[]}","[]","0", "",,NaN,,"901419283607","WSDOT SMPT and TCRS Space > TCRS > TCRS Tasks","",""
86bbh2zw5,https://app.clickup.com/t/86bbh2zw5,"Task","SMTP/TCRS Combined Project Schedule","Combined SMTP and TCRS project schedule with convergence and divergence points detailed on the project timeline, along with key milestones.",complete,1787164979622,"8/19/2026, 11:42:59 AM PDT",1789729200000,"9/18/2026, 4:00:00 AM PDT",1782903600000,"7/1/2026, 4:00:00 AM PDT",86bbh2c88,"","[]","[]","[task order 1]",null,"TCRS Tasks","[""TCRS""]","WSDOT SMPT and TCRS Space","","","{}","[]","0", "",,NaN,,"901419283607","WSDOT SMPT and TCRS Space > TCRS > TCRS Tasks","",""
86bbh30vn,https://app.clickup.com/t/86bbh30vn,"Task","VisionEval Meeting Materials and Summaries","Work with WSDOT to schedule, conduct, and summarize technical discussions with the WSDOT modeling team to coordinate on VisionEval capabilities, data availability and needs, desired outputs, and potential supplemental methods.",complete,1787165025204,"8/19/2026, 11:43:45 AM PDT",1788519600000,"9/4/2026, 4:00:00 AM PDT",1784113200000,"7/15/2026, 4:00:00 AM PDT",86bbh2c88,"","[]","[]","[task order 1]",null,"TCRS Tasks","[""TCRS""]","WSDOT SMPT and TCRS Space","","","{}","[]","0", "",,NaN,,"901419283607","WSDOT SMPT and TCRS Space > TCRS > TCRS Tasks","",""
86bbh2c1f,https://app.clickup.com/t/86bbh2c1f,"Task","TO1 - Task 2: Work Plan Dev","",complete,1787163618050,"8/19/2026, 11:20:18 AM PDT",1788174000000,"8/31/2026, 4:00:00 AM PDT",1780657200000,"6/5/2026, 4:00:00 AM PDT",null,"","[]","[Leslie Langley]","[task order 1]",null,"TCRS Tasks","[""TCRS""]","WSDOT SMPT and TCRS Space","","","{}","[]","0", "",,NaN,,"901419283607","WSDOT SMPT and TCRS Space > TCRS > TCRS Tasks","",""
86bbtnfvr,https://app.clickup.com/t/86bbtnfvr,"Task","set up Freight focused call w/Jim","",complete,1788366726345,"9/2/2026, 9:32:06 AM PDT",1791975600000,"10/14/2026, 4:00:00 AM PDT",1791975600000,"10/14/2026, 4:00:00 AM PDT",86bbr25q3,"","[]","[Leslie Langley]","[]",2,"TCRS Tasks","[""TCRS""]","WSDOT SMPT and TCRS Space","","","{}","[]","0", "",,NaN,,"901419283607","WSDOT SMPT and TCRS Space > TCRS > TCRS Tasks","",""
86bckpwd3,https://app.clickup.com/t/86bckpwd3,"Task","draft value prop definitions","",complete,1792177901599,"10/16/2026, 12:11:41 PM PDT",1792062000000,"10/15/2026, 4:00:00 AM PDT",,"",86bcaa7h2,"","[]","[Leslie Langley]","[]",null,"TCRS Tasks","[""TCRS""]","WSDOT SMPT and TCRS Space","","","{}","[]","0", "",,NaN,,"901419283607","WSDOT SMPT and TCRS Space > TCRS > TCRS Tasks","",""
86bbh3a51,https://app.clickup.com/t/86bbh3a51,"Deliverable","Modeling Tools Review","Comparative summary of capabilities and level of effort of tools addressing policies outside  VisionEval.\n\nModeling tools review. Based on WSDOT modeling’s analysis of VisionEval’s capabilities and limitations, Transpo will compile a comparative summary of the capabilities and level of effort of tools that may address policies and investments that VisionEval cannot address. This summary will help guide which policies can be evaluated under the project timeline and which may need future attention.",in progress,1787165545543,"8/19/2026, 11:52:25 AM PDT",1792753200000,"10/23/2026, 4:00:00 AM PDT",1791284400000,"10/6/2026, 4:00:00 AM PDT",86bbh2ckh,"86bbh398v","[]","[Leslie Langley]","[task order 2]",null,"TCRS Tasks","[""TCRS""]","WSDOT SMPT and TCRS Space","","","{}","[]","0", "",,NaN,,"901419283607","WSDOT SMPT and TCRS Space > TCRS > TCRS Tasks","",""
86bch8emt,https://app.clickup.com/t/86bch8emt,"Task","Carbon Reduction Measures Review","",in progress,1791871391112,"10/12/2026, 11:03:11 PM PDT",1793358000000,"10/30/2026, 4:00:00 AM PDT",,"",86bbh2ckh,"86bch8f27","[]","[Leslie Langley]","[]",null,"TCRS Tasks","[""TCRS""]","WSDOT SMPT and TCRS Space","","","{}","[]","0", "",,NaN,,"901419283607","WSDOT SMPT and TCRS Space > TCRS > TCRS Tasks","",""
86bbh2ckh,https://app.clickup.com/t/86bbh2ckh,"Task","TO2 - Task 1: Data Synthesis and Trends Review","",in progress,1787163664502,"8/19/2026, 11:21:04 AM PDT",1793358000000,"10/30/2026, 4:00:00 AM PDT",1790679600000,"9/29/2026, 4:00:00 AM PDT",null,"86bch8emt,86bbh39v1,86bbh3a51,86bbh3aj8","[]","[Leslie Langley]","[task order 2]",3,"TCRS Tasks","[""TCRS""]","WSDOT SMPT and TCRS Space","","","{}","[]","0", "",,NaN,,"901419283607","WSDOT SMPT and TCRS Space > TCRS > TCRS Tasks","",""
86bbh3aj8,https://app.clickup.com/t/86bbh3aj8,"Deliverable","VisionEval Data Needs Support ","Summary focused on filling data gaps to support VisionEval implementation.\n\nVisionEval data needs support: The WSDOT modeling team will lead the development of the data plan to support the set up and execution of VisionEval and identify data gaps. Transpo will coordinate with WSDOT staff to support in gathering identified data inputs necessary for VisionEval Baseline and Scenario runs. Transpo will work with WSDOT if any data gaps are identified and will support developing strategies to reconcile them. Transpo will summarize the findings in a data needs summary memo to supplement the data plan.",in progress,1787165573201,"8/19/2026, 11:52:53 AM PDT",1793358000000,"10/30/2026, 4:00:00 AM PDT",1791284400000,"10/6/2026, 4:00:00 AM PDT",86bbh2ckh,"86bbh39ky","[]","[Leslie Langley]","[task order 2]",null,"TCRS Tasks","[""TCRS""]","WSDOT SMPT and TCRS Space","","","{}","[]","0", "",,NaN,,"901419283607","WSDOT SMPT and TCRS Space > TCRS > TCRS Tasks","",""
86bbh7eux,https://app.clickup.com/t/86bbh7eux,"Task","TCRS Bi-weekly","",in progress,1787175395905,"8/19/2026, 2:36:35 PM PDT",1830168000000,"12/30/2027, 4:00:00 AM PST",1783508400000,"7/8/2026, 4:00:00 AM PDT",86bbh7erh,"","[]","[]","[]",null,"TCRS Tasks","[""TCRS""]","WSDOT SMPT and TCRS Space","","","{}","[]","0", "",,NaN,,"901419283607","WSDOT SMPT and TCRS Space > TCRS > TCRS Tasks","",""
86bbh2hdq,https://app.clickup.com/t/86bbh2hdq,"Task","Biweekly Meeting Agendas and Note","",in progress,1787164036640,"8/19/2026, 11:27:16 AM PDT",1830168000000,"12/30/2027, 4:00:00 AM PST",1780657200000,"6/5/2026, 4:00:00 AM PDT",86bbh2brd,"","[]","[Leslie Langley]","[]",3,"TCRS Tasks","[""TCRS""]","WSDOT SMPT and TCRS Space","","","{}","[]","0", "",,NaN,,"901419283607","WSDOT SMPT and TCRS Space > TCRS > TCRS Tasks","",""
86bbh2q3y,https://app.clickup.com/t/86bbh2q3y,"Task","Monthly Invoices and Progress Reports","",in progress,1787164446494,"8/19/2026, 11:34:06 AM PDT",1830168000000,"12/30/2027, 4:00:00 AM PST",1780657200000,"6/5/2026, 4:00:00 AM PDT",86bbh2brd,"","[]","[]","[]",2,"TCRS Tasks","[""TCRS""]","WSDOT SMPT and TCRS Space","","","{}","[]","0", "",,NaN,,"901419283607","WSDOT SMPT and TCRS Space > TCRS > TCRS Tasks","",""
86bch8njh,https://app.clickup.com/t/86bch8njh,"Task","Draft Outreach Plan","",in progress,1791873364149,"10/12/2026, 11:36:04 PM PDT",1792494000000,"10/20/2026, 4:00:00 AM PDT",1790852400000,"10/1/2026, 4:00:00 AM PDT",86bc9zzvn,"","[]","[Leslie Langley]","[]",1,"TCRS Tasks","[""TCRS""]","WSDOT SMPT and TCRS Space","","","{}","[]","0", "",,NaN,,"901419283607","WSDOT SMPT and TCRS Space > TCRS > TCRS Tasks","",""
86bcdu41g,https://app.clickup.com/t/86bcdu41g,"Task","Data Collection","",in progress,1791302236578,"10/6/2026, 8:57:16 AM PDT",1793793600000,"11/4/2026, 4:00:00 AM PST",1790852400000,"10/1/2026, 4:00:00 AM PDT",86bbr25kr,"","[]","[]","[]",null,"TCRS Tasks","[""TCRS""]","WSDOT SMPT and TCRS Space","","","{}","[]","0", "",,NaN,,"901419283607","WSDOT SMPT and TCRS Space > TCRS > TCRS Tasks","",""
86bcdu48w,https://app.clickup.com/t/86bcdu48w,"Task","Baseline Run","",in progress,1791302252901,"10/6/2026, 8:57:32 AM PDT",1796040000000,"11/30/2026, 4:00:00 AM PST",,"",86bbr25kr,"","[]","[]","[]",null,"TCRS Tasks","[""TCRS""]","WSDOT SMPT and TCRS Space","","","{}","[]","0", "",,NaN,,"901419283607","WSDOT SMPT and TCRS Space > TCRS > TCRS Tasks","",""
86bca02hf,https://app.clickup.com/t/86bca02hf,"Deliverable","Transpo Developed Scripts & Documentation","Sharing R/Python scripts and code used to develop, support, or enhance VE-State model with training material.",in progress,1790748018976,"9/29/2026, 11:00:18 PM PDT",1801224000000,"1/29/2027, 4:00:00 AM PST",1796040000000,"11/30/2026, 4:00:00 AM PST",86bbr25kr,"86bcaa83m","[]","[]","[]",null,"TCRS Tasks","[""TCRS""]","WSDOT SMPT and TCRS Space","","","{}","[]","0", "",,NaN,,"901419283607","WSDOT SMPT and TCRS Space > TCRS > TCRS Tasks","",""
86bca02ew,https://app.clickup.com/t/86bca02ew,"Decision Point","Decision Point 3: Task 3 Approach Agreement","WSDOT teams and Transpo agree on approach for Task 3, considering level of effort.",in progress,1790747997519,"9/29/2026, 10:59:57 PM PDT",1801224000000,"1/29/2027, 4:00:00 AM PST",1799150400000,"1/5/2027, 4:00:00 AM PST",86bbr25kr,"","[]","[]","[]",null,"TCRS Tasks","[""TCRS""]","WSDOT SMPT and TCRS Space","","","{}","[]","0", "",,NaN,,"901419283607","WSDOT SMPT and TCRS Space > TCRS > TCRS Tasks","",""
86bch8kxh,https://app.clickup.com/t/86bch8kxh,"Task","Internal Review Dashboard","",in progress,1791872928818,"10/12/2026, 11:28:48 PM PDT",1801224000000,"1/29/2027, 4:00:00 AM PST",,"",86bbr25kr,"","[]","[]","[]",null,"TCRS Tasks","[""TCRS""]","WSDOT SMPT and TCRS Space","","","{}","[]","0", "",,NaN,,"901419283607","WSDOT SMPT and TCRS Space > TCRS > TCRS Tasks","",""
86bbr25kr,https://app.clickup.com/t/86bbr25kr,"Task","TO2 - Task 2. VisionEval Support & Baseline Analysis","",in progress,1788227011681,"8/31/2026, 6:43:31 PM PDT",1801224000000,"1/29/2027, 4:00:00 AM PST",1790679600000,"9/29/2026, 4:00:00 AM PDT",null,"86bch8kxh,86bca02fn,86bca02ew,86bcdu41g,86bca02eb,86bca02fa,86bcdu48w,86bca02ek,86bca02hf","[]","[]","[task order 2]",null,"TCRS Tasks","[""TCRS""]","WSDOT SMPT and TCRS Space","","","{}","[]","0", "",,NaN,,"901419283607","WSDOT SMPT and TCRS Space > TCRS > TCRS Tasks","",""
86bbr25q3,https://app.clickup.com/t/86bbr25q3,"Task","TO2 - Task 4. Engagement","",in progress,1788227044833,"8/31/2026, 6:44:04 PM PDT",1824807600000,"10/29/2027, 4:00:00 AM PDT",1791284400000,"10/6/2026, 4:00:00 AM PDT",null,"86bch8vg0,86bc9zzvn,86bc9zzvm,86bc9zzvr,86bc9zzvt,86bc9zzvv","[]","[]","[task order 2]",null,"TCRS Tasks","[""TCRS""]","WSDOT SMPT and TCRS Space","","","{}","[]","0", "",,NaN,,"901419283607","WSDOT SMPT and TCRS Space > TCRS > TCRS Tasks","",""
86bbh39v1,https://app.clickup.com/t/86bbh39v1,"Deliverable","Data Synthesis & Trends Memo (Draft & Final)","Summarizes policy reviews, carbon market updates, trends/best practices, and policy baseline findings.\n\nPolicy review. Transpo will review policies and key studies completed since the adoption of the 2023 TCRS, including transportation, housing, land use, and other efforts underway or implemented by WSDOT and regional and local partners. Transpo will also summarize the status and implications of the linked Western Carbon markets (Washington, California, and Oregon). \nTrends & best practices review. Transpo will summarize trends and best practices in carbon reduction strategies, paying particular attention to technology changes, such as alternative fuels, smart city infrastructure, AI adoption, and advanced telecommuting. This review will be tightly coordinated with the trends analysis being conducted as part of the SMTP to ensure consistency.",in progress,1787165525675,"8/19/2026, 11:52:05 AM PDT",1793444400000,"10/31/2026, 4:00:00 AM PDT",1790679600000,"9/29/2026, 4:00:00 AM PDT",86bbh2ckh,"86bbh37x7,86bbh38vd","[]","[]","[task order 2]",null,"TCRS Tasks","[""TCRS""]","WSDOT SMPT and TCRS Space","","","{}","[]","0", "",,NaN,,"901419283607","WSDOT SMPT and TCRS Space > TCRS > TCRS Tasks","",""
86bbh2brd,https://app.clickup.com/t/86bbh2brd,"Task","TO1 - Task 1: Management and Admin","",in progress,1787163603282,"8/19/2026, 11:20:03 AM PDT",1830168000000,"12/30/2027, 4:00:00 AM PST",1780657200000,"6/5/2026, 4:00:00 AM PDT",null,"86bbh2hdq,86bbh2q3y","[]","[Leslie Langley]","[task order 1]",3,"TCRS Tasks","[""TCRS""]","WSDOT SMPT and TCRS Space","","","{}","[]","0", "",,NaN,,"901419283607","WSDOT SMPT and TCRS Space > TCRS > TCRS Tasks","",""
86bbh7erh,https://app.clickup.com/t/86bbh7erh,"Task","Meetings","",in progress,1787175383201,"8/19/2026, 2:36:23 PM PDT",1798632000000,"12/30/2026, 4:00:00 AM PST",1783508400000,"7/8/2026, 4:00:00 AM PDT",null,"86bbh7eux","[]","[Leslie Langley]","[task order 1,task order 2]",null,"TCRS Tasks","[""TCRS""]","WSDOT SMPT and TCRS Space","","","{}","[]","0", "",,NaN,,"901419283607","WSDOT SMPT and TCRS Space > TCRS > TCRS Tasks","",""
86bbh37x7,https://app.clickup.com/t/86bbh37x7,"Task","Draft Data Synthesis & Trends Memo","",in progress,1787165393488,"8/19/2026, 11:49:53 AM PDT",1792148400000,"10/16/2026, 4:00:00 AM PDT",1790679600000,"9/29/2026, 4:00:00 AM PDT",86bbh39v1,"","[]","[]","[task order 2]",null,"TCRS Tasks","[""TCRS""]","WSDOT SMPT and TCRS Space","","","{}","[]","0", "",,NaN,,"901419283607","WSDOT SMPT and TCRS Space > TCRS > TCRS Tasks","",""
86bca02eb,https://app.clickup.com/t/86bca02eb,"Decision Point","Decision Point 1: Modeling Approach Agreement","WSDOT and Transpo agree on VisionEval improvements, overall modeling approach, and data documentation.\nArea types modeling: urban suburban, rural and regional?\nreview for possibilities on modeling effort\ncompare to other WSDOT plans",to do,1790747986109,"9/29/2026, 10:59:46 PM PDT",1793098800000,"10/27/2026, 4:00:00 AM PDT",1792494000000,"10/20/2026, 4:00:00 AM PDT",86bbr25kr,"","[]","[]","[]",null,"TCRS Tasks","[""TCRS""]","WSDOT SMPT and TCRS Space","","","{}","[]","0", "",,NaN,,"901419283607","WSDOT SMPT and TCRS Space > TCRS > TCRS Tasks","",""
86bbh38vd,https://app.clickup.com/t/86bbh38vd,"Task","Final Data Synthesis & Trends Memo","",to do,1787165448519,"8/19/2026, 11:50:48 AM PDT",1793358000000,"10/30/2026, 4:00:00 AM PDT",1790679600000,"9/29/2026, 4:00:00 AM PDT",86bbh39v1,"","[]","[]","[task order 2]",null,"TCRS Tasks","[""TCRS""]","WSDOT SMPT and TCRS Space","","","{}","[]","0", "",,NaN,,"901419283607","WSDOT SMPT and TCRS Space > TCRS > TCRS Tasks","",""
86bbh39ky,https://app.clickup.com/t/86bbh39ky,"Task","VisionEval data gaps summary","",to do,1787165508578,"8/19/2026, 11:51:48 AM PDT",1793358000000,"10/30/2026, 4:00:00 AM PDT",1792407600000,"10/19/2026, 4:00:00 AM PDT",86bbh3aj8,"","[]","[]","[]",null,"TCRS Tasks","[""TCRS""]","WSDOT SMPT and TCRS Space","","","{}","[]","0", "",,NaN,,"901419283607","WSDOT SMPT and TCRS Space > TCRS > TCRS Tasks","",""
86bbh398v,https://app.clickup.com/t/86bbh398v,"Task","Modeling and Supporting Tools Capabilities Summary","",to do,1787165476232,"8/19/2026, 11:51:16 AM PDT",1793358000000,"10/30/2026, 4:00:00 AM PDT",1792062000000,"10/15/2026, 4:00:00 AM PDT",86bbh3a51,"","[]","[Leslie Langley]","[]",null,"TCRS Tasks","[""TCRS""]","WSDOT SMPT and TCRS Space","","","{}","[]","0", "",,NaN,,"901419283607","WSDOT SMPT and TCRS Space > TCRS > TCRS Tasks","",""
86bch8f27,https://app.clickup.com/t/86bch8f27,"Task","Carbon Reduction Measures Review Summary","Carbon Reduction Measures Review. Transpo will review the 2023 TCRS and suggest additional carbon reduction measures (based on the policy and best practices reviews above) that could be considered in this TCRS update. Steps to include: \nReview of: \n2023 Policies \nAdditional policies/measures identified by WSDOT or that are new since 2023 \nPolicies/measures identified in local and regional plans \nEngagement: \nTranspo will coordinate closely with the SMTP engagement team to review compiled findings with MPOs and RTPOs in a way that avoids meeting/participation fatigue and allows us to meet the needs of this TCRS \nShare compiled findings for review by MPOs and RTPOs with request to help narrow focus",to do,1791871425717,"10/12/2026, 11:03:45 PM PDT",1793358000000,"10/30/2026, 4:00:00 AM PDT",,"",86bch8emt,"","[]","[]","[]",null,"TCRS Tasks","[""TCRS""]","WSDOT SMPT and TCRS Space","","","{}","[]","0", "",,NaN,,"901419283607","WSDOT SMPT and TCRS Space > TCRS > TCRS Tasks","",""
86bca02fa,https://app.clickup.com/t/86bca02fa,"Deliverable","Methodology Decision Memo","Documents decisions on off-model calculations, probability-based GHG modeling, and modeling framework.",to do,1790748006662,"9/29/2026, 11:00:06 PM PDT",1793966400000,"11/6/2026, 4:00:00 AM PST",1793185200000,"10/28/2026, 4:00:00 AM PDT",86bbr25kr,"","[]","[]","[]",null,"TCRS Tasks","[""TCRS""]","WSDOT SMPT and TCRS Space","","","{}","[]","0", "",,NaN,,"901419283607","WSDOT SMPT and TCRS Space > TCRS > TCRS Tasks","",""
86bca02ek,https://app.clickup.com/t/86bca02ek,"Decision Point","Decision Point 2: Baseline Validation Agreement","WSDOT teams and Transpo agree on baseline validation approach before proceeding.",to do,1790747992689,"9/29/2026, 10:59:52 PM PDT",1796731200000,"12/8/2026, 4:00:00 AM PST",1796126400000,"12/1/2026, 4:00:00 AM PST",86bbr25kr,"","[]","[]","[]",null,"TCRS Tasks","[""TCRS""]","WSDOT SMPT and TCRS Space","","","{}","[]","0", "",,NaN,,"901419283607","WSDOT SMPT and TCRS Space > TCRS > TCRS Tasks","",""
86bca02fn,https://app.clickup.com/t/86bca02fn,"Deliverable","VisionEval Technical Documentation","Technical documentation covering scenario development, validation, and evaluation.\nTranspoGroup to support with revision and edits.",to do,1790748012590,"9/29/2026, 11:00:12 PM PDT",1801224000000,"1/29/2027, 4:00:00 AM PST",1790852400000,"10/1/2026, 4:00:00 AM PDT",86bbr25kr,"","[]","[]","[]",null,"TCRS Tasks","[""TCRS""]","WSDOT SMPT and TCRS Space","","","{}","[]","0", "",,NaN,,"901419283607","WSDOT SMPT and TCRS Space > TCRS > TCRS Tasks","",""
86bc9zzvf,https://app.clickup.com/t/86bc9zzvf,"Deliverable","Scenario Development Technical Documentation","Detailed technical documentation of scenario modeling, elasticity validation, and sensitivity   testing.",to do,1790746627757,"9/29/2026, 10:37:07 PM PDT",1803556800000,"2/25/2027, 4:00:00 AM PST",1803384000000,"2/23/2027, 4:00:00 AM PST",86bbr25nw,"","[]","[]","[]",null,"TCRS Tasks","[""TCRS""]","WSDOT SMPT and TCRS Space","","","{}","[]","0", "",,NaN,,"901419283607","WSDOT SMPT and TCRS Space > TCRS > TCRS Tasks","",""
86bbr25rf,https://app.clickup.com/t/86bbr25rf,"Task","TO2 - Task 5. MTES Finalization & Reporting","",to do,1788227059935,"8/31/2026, 6:44:19 PM PDT",1830254400000,"12/31/2027, 4:00:00 AM PST",1803902400000,"3/1/2027, 4:00:00 AM PST",null,"86bc9zzvy,86bc9zzw1,86bc9zzw0,86bc9zzw5,86bc9zzw6,86bc9zzw7,86bc9zzwe,86bc9zzwd,86bc9zzwf,86bc9zzwj,86bc9zzwn,86bc9zzwp,86bc9zzwr,86bc9zzwu","[]","[]","[task order 2]",null,"TCRS Tasks","[""TCRS""]","WSDOT SMPT and TCRS Space","","","{}","[]","0", "",,NaN,,"901419283607","WSDOT SMPT and TCRS Space > TCRS > TCRS Tasks","",""
86bcaa83m,https://app.clickup.com/t/86bcaa83m,"Task","Advisory Committee Engagement","",to do,1790784668149,"9/30/2026, 9:11:08 AM PDT",,"",,"",86bca02hf,"","[]","[Leslie Langley]","[]",1,"TCRS Tasks","[""TCRS""]","WSDOT SMPT and TCRS Space","","","{}","[]","0", "",,NaN,,"901419283607","WSDOT SMPT and TCRS Space > TCRS > TCRS Tasks","",""
86bc9zzvn,https://app.clickup.com/t/86bc9zzvn,"Deliverable","TCRS Outreach Plan and Targeted Materials","Outreach plan, presentation materials, meeting notes, and interview questions.",to do,1790746628279,"9/29/2026, 10:37:08 PM PDT",1795262400000,"11/21/2026, 4:00:00 AM PST",1790679600000,"9/29/2026, 4:00:00 AM PDT",86bbr25q3,"86bch8njh,86bch8nkg,86bch8ny4","[]","[Jim Brogan,Leslie Langley]","[]",null,"TCRS Tasks","[""TCRS""]","WSDOT SMPT and TCRS Space","","","{}","[]","0", "",,NaN,,"901419283607","WSDOT SMPT and TCRS Space > TCRS > TCRS Tasks","",""
86bcaa70q,https://app.clickup.com/t/86bcaa70q,"milestone","Advisory Committee Input on Scenarios","",to do,1790784581693,"9/30/2026, 9:09:41 AM PDT",1797681600000,"12/19/2026, 4:00:00 AM PST",1796126400000,"12/1/2026, 4:00:00 AM PST",86bch8vg0,"","[]","[]","[]",2,"TCRS Tasks","[""TCRS""]","WSDOT SMPT and TCRS Space","","","{}","[]","0", "",,NaN,,"901419283607","WSDOT SMPT and TCRS Space > TCRS > TCRS Tasks","",""
86bch8vg0,https://app.clickup.com/t/86bch8vg0,"Task","Advisory Committee Engagement","",to do,1791874217898,"10/12/2026, 11:50:17 PM PDT",1830254400000,"12/31/2027, 4:00:00 AM PST",1790852400000,"10/1/2026, 4:00:00 AM PDT",86bbr25q3,"86bcaa70q,86bcaa7h2","[]","[]","[]",null,"TCRS Tasks","[""TCRS""]","WSDOT SMPT and TCRS Space","","","{}","[]","0", "",,NaN,,"901419283607","WSDOT SMPT and TCRS Space > TCRS > TCRS Tasks","",""
86bcaa7h2,https://app.clickup.com/t/86bcaa7h2,"milestone","Advisory Committee Input - Value Prop","",to do,1790784623744,"9/30/2026, 9:10:23 AM PDT",1793012400000,"10/26/2026, 4:00:00 AM PDT",1791802800000,"10/12/2026, 4:00:00 AM PDT",86bch8vg0,"","[]","[]","[]",2,"TCRS Tasks","[""TCRS""]","WSDOT SMPT and TCRS Space","","","{}","[]","0", "",,NaN,,"901419283607","WSDOT SMPT and TCRS Space > TCRS > TCRS Tasks","",""
86bc9zzvm,https://app.clickup.com/t/86bc9zzvm,"Decision Point","Decision Point 7: TCRS Outreach Plan Approval","TCRS outreach plan implemented after WSDOT approval.",to do,1790746628230,"9/29/2026, 10:37:08 PM PDT",1793444400000,"10/31/2026, 4:00:00 AM PDT",1793444400000,"10/31/2026, 4:00:00 AM PDT",86bbr25q3,"","[]","[]","[]",null,"TCRS Tasks","[""TCRS""]","WSDOT SMPT and TCRS Space","","","{}","[]","0", "",,NaN,,"901419283607","WSDOT SMPT and TCRS Space > TCRS > TCRS Tasks","",""
86bc9zzwr,https://app.clickup.com/t/86bc9zzwr,"Deliverable","Companion Slide Deck","Executive slide   deck framing TCRS within WSDOT Family of Plans and outlining its intended   use.",to do,1790746631553,"9/29/2026, 10:37:11 PM PDT",1830254400000,"12/31/2027, 4:00:00 AM PST",1803902400000,"3/1/2027, 4:00:00 AM PST",86bbr25rf,"","[]","[]","[]",null,"TCRS Tasks","[""TCRS""]","WSDOT SMPT and TCRS Space","","","{}","[]","0", "",,NaN,,"901419283607","WSDOT SMPT and TCRS Space > TCRS > TCRS Tasks","",""
86bc9zzwu,https://app.clickup.com/t/86bc9zzwu,"milestone","Project Closeout","Final contract   closeout activities.",to do,1790746631754,"9/29/2026, 10:37:11 PM PDT",1830254400000,"12/31/2027, 4:00:00 AM PST",1827662400000,"12/1/2027, 4:00:00 AM PST",86bbr25rf,"","[]","[]","[]",null,"TCRS Tasks","[""TCRS""]","WSDOT SMPT and TCRS Space","","","{}","[]","0", "",,NaN,,"901419283607","WSDOT SMPT and TCRS Space > TCRS > TCRS Tasks","",""
86bc9zzwn,https://app.clickup.com/t/86bc9zzwn,"Deliverable","Project Webpage WCAG Compliant Materials","Digital assets,   summary fact sheets, model outcome graphics, survey materials, and web   content.",to do,1790746631270,"9/29/2026, 10:37:11 PM PDT",1830254400000,"12/31/2027, 4:00:00 AM PST",1803902400000,"3/1/2027, 4:00:00 AM PST",86bbr25rf,"","[]","[]","[]",null,"TCRS Tasks","[""TCRS""]","WSDOT SMPT and TCRS Space","","","{}","[]","0", "",,NaN,,"901419283607","WSDOT SMPT and TCRS Space > TCRS > TCRS Tasks","",""
86bc9zzwp,https://app.clickup.com/t/86bc9zzwp,"Deliverable","Final 2027 TCRS Project Report","Definitive   technical record documenting modeling, assumptions, calibration, and   findings.",to do,1790746631111,"9/29/2026, 10:37:11 PM PDT",1830254400000,"12/31/2027, 4:00:00 AM PST",1827662400000,"12/1/2027, 4:00:00 AM PST",86bbr25rf,"","[]","[]","[]",null,"TCRS Tasks","[""TCRS""]","WSDOT SMPT and TCRS Space","","","{}","[]","0", "",,NaN,,"901419283607","WSDOT SMPT and TCRS Space > TCRS > TCRS Tasks","",""
86bc9zzw7,https://app.clickup.com/t/86bc9zzw7,"milestone","FHWA Revisions Review with WSDOT","Review revisions resulting from FHWA review with WSDOT.",to do,1790746630019,"9/29/2026, 10:37:10 PM PDT",1814353200000,"6/30/2027, 4:00:00 AM PDT",1811847600000,"6/1/2027, 4:00:00 AM PDT",86bbr25rf,"","[]","[]","[]",null,"TCRS Tasks","[""TCRS""]","WSDOT SMPT and TCRS Space","","","{}","[]","0", "",,NaN,,"901419283607","WSDOT SMPT and TCRS Space > TCRS > TCRS Tasks","",""
86bc9zzvy,https://app.clickup.com/t/86bc9zzvy,"Deliverable","MTES Recommendations","Finalized   multimodal transportation efficiency recommendations for incorporation into   the SMTP.",to do,1790746629307,"9/29/2026, 10:37:09 PM PDT",1830254400000,"12/31/2027, 4:00:00 AM PST",1803902400000,"3/1/2027, 4:00:00 AM PST",86bbr25rf,"","[]","[]","[]",null,"TCRS Tasks","[""TCRS""]","WSDOT SMPT and TCRS Space","","","{}","[]","0", "",,NaN,,"901419283607","WSDOT SMPT and TCRS Space > TCRS > TCRS Tasks","",""
86bc9zzw5,https://app.clickup.com/t/86bc9zzw5,"milestone","Draft 2027 TCRS Update Review with WSDOT","Internal review of   the full draft TCRS update by WSDOT project team.",to do,1790746629979,"9/29/2026, 10:37:09 PM PDT",1809082800000,"4/30/2027, 4:00:00 AM PDT",1806577200000,"4/1/2027, 4:00:00 AM PDT",86bbr25rf,"","[]","[]","[]",null,"TCRS Tasks","[""TCRS""]","WSDOT SMPT and TCRS Space","","","{}","[]","0", "",,NaN,,"901419283607","WSDOT SMPT and TCRS Space > TCRS > TCRS Tasks","",""
86bc9zzw6,https://app.clickup.com/t/86bc9zzw6,"milestone","Initial Pre-Public Draft Review with FHWA","Submission and review of pre-public draft version with FHWA.",to do,1790746629997,"9/29/2026, 10:37:09 PM PDT",1811588400000,"5/29/2027, 4:00:00 AM PDT",1809169200000,"5/1/2027, 4:00:00 AM PDT",86bbr25rf,"","[]","[]","[]",null,"TCRS Tasks","[""TCRS""]","WSDOT SMPT and TCRS Space","","","{}","[]","0", "",,NaN,,"901419283607","WSDOT SMPT and TCRS Space > TCRS > TCRS Tasks","",""
86bc9zzw1,https://app.clickup.com/t/86bc9zzw1,"milestone","Outline Review with WSDOT","Initial draft   outline review of the TCRS Update with WSDOT staff.",to do,1790746629454,"9/29/2026, 10:37:09 PM PDT",1804852800000,"3/12/2027, 4:00:00 AM PST",1804852800000,"3/12/2027, 4:00:00 AM PST",86bbr25rf,"","[]","[]","[]",null,"TCRS Tasks","[""TCRS""]","WSDOT SMPT and TCRS Space","","","{}","[]","0", "",,NaN,,"901419283607","WSDOT SMPT and TCRS Space > TCRS > TCRS Tasks","",""
86bc9zzwd,https://app.clickup.com/t/86bc9zzwd,"Deliverable","WSDOT Leadership & Govt Affairs Review","Internal evaluation draft reviewed by WSDOT leadership and Government Affairs Office.",to do,1790746630587,"9/29/2026, 10:37:10 PM PDT",1824807600000,"10/29/2027, 4:00:00 AM PDT",1819796400000,"9/1/2027, 4:00:00 AM PDT",86bbr25rf,"","[]","[]","[]",null,"TCRS Tasks","[""TCRS""]","WSDOT SMPT and TCRS Space","","","{}","[]","0", "",,NaN,,"901419283607","WSDOT SMPT and TCRS Space > TCRS > TCRS Tasks","",""
86bc9zzw0,https://app.clickup.com/t/86bc9zzw0,"milestone","Outline Review with FHWA","Review of TCRS   update draft outline with FHWA.",to do,1790746629436,"9/29/2026, 10:37:09 PM PDT",1806490800000,"3/31/2027, 4:00:00 AM PDT",1806490800000,"3/31/2027, 4:00:00 AM PDT",86bbr25rf,"","[]","[]","[]",null,"TCRS Tasks","[""TCRS""]","WSDOT SMPT and TCRS Space","","","{}","[]","0", "",,NaN,,"901419283607","WSDOT SMPT and TCRS Space > TCRS > TCRS Tasks","",""
86bc9zzwf,https://app.clickup.com/t/86bc9zzwf,"Deliverable","Draft 2027 TCRS Project Report","Draft technical companion report documenting analytical approaches, modeling, and engagement.",to do,1790746630605,"9/29/2026, 10:37:10 PM PDT",1827576000000,"11/30/2027, 4:00:00 AM PST",1825066800000,"11/1/2027, 4:00:00 AM PDT",86bbr25rf,"","[]","[]","[]",null,"TCRS Tasks","[""TCRS""]","WSDOT SMPT and TCRS Space","","","{}","[]","0", "",,NaN,,"901419283607","WSDOT SMPT and TCRS Space > TCRS > TCRS Tasks","",""
86bc9zzwj,https://app.clickup.com/t/86bc9zzwj,"milestone","Final 2027 TCRS Update Submittal to FHWA","Final submittal meeting statutory requirements submitted to FHWA for certification.",to do,1790746631095,"9/29/2026, 10:37:11 PM PDT",1826280000000,"11/15/2027, 4:00:00 AM PST",1826280000000,"11/15/2027, 4:00:00 AM PST",86bbr25rf,"","[]","[]","[]",null,"TCRS Tasks","[""TCRS""]","WSDOT SMPT and TCRS Space","","","{}","[]","0", "",,NaN,,"901419283607","WSDOT SMPT and TCRS Space > TCRS > TCRS Tasks","",""
86bc9zzwe,https://app.clickup.com/t/86bc9zzwe,"Deliverable","Draft 2027 TCRS Update for Public Engagement","",to do,1790746630512,"9/29/2026, 10:37:10 PM PDT",1809082800000,"4/30/2027, 4:00:00 AM PDT",1806577200000,"4/1/2027, 4:00:00 AM PDT",86bbr25rf,"","[]","[]","[]",null,"TCRS Tasks","[""TCRS""]","WSDOT SMPT and TCRS Space","","","{}","[]","0", "",,NaN,,"901419283607","WSDOT SMPT and TCRS Space > TCRS > TCRS Tasks","",""
86bc9zzvv,https://app.clickup.com/t/86bc9zzvv,"Deliverable","Compiled TCRS Engagement Memo (508 Compliant)","Full compilation of outreach activities, feedback tabulations, and integration notes.",to do,1790746628855,"9/29/2026, 10:37:08 PM PDT",1824807600000,"10/29/2027, 4:00:00 AM PDT",1791284400000,"10/6/2026, 4:00:00 AM PDT",86bbr25q3,"","[]","[]","[]",null,"TCRS Tasks","[""TCRS""]","WSDOT SMPT and TCRS Space","","","{}","[]","0", "",,NaN,,"901419283607","WSDOT SMPT and TCRS Space > TCRS > TCRS Tasks","",""
86bc9zzvt,https://app.clickup.com/t/86bc9zzvt,"Deliverable","Presentations and Meeting Summaries","Documentation of meetings with MPOs/RTPOs, Tribes, freight industry, and advisory committee.",to do,1790746628770,"9/29/2026, 10:37:08 PM PDT",1823598000000,"10/15/2027, 4:00:00 AM PDT",1791284400000,"10/6/2026, 4:00:00 AM PDT",86bbr25q3,"","[]","[]","[]",null,"TCRS Tasks","[""TCRS""]","WSDOT SMPT and TCRS Space","","","{}","[]","0", "",,NaN,,"901419283607","WSDOT SMPT and TCRS Space > TCRS > TCRS Tasks","",""
86bc9zzv6,https://app.clickup.com/t/86bc9zzv6,"Decision Point","Decision Point 5: Additional Analysis Approval","Additional scenario analysis approved by WSDOT project management.",to do,1790746627046,"9/29/2026, 10:37:07 PM PDT",1796990400000,"12/11/2026, 4:00:00 AM PST",1794916800000,"11/17/2026, 4:00:00 AM PST",86bbr25nw,"","[]","[]","[]",null,"TCRS Tasks","[""TCRS""]","WSDOT SMPT and TCRS Space","","","{}","[]","0", "",,NaN,,"901419283607","WSDOT SMPT and TCRS Space > TCRS > TCRS Tasks","",""
86bc9zzvr,https://app.clickup.com/t/86bc9zzvr,"Deliverable","Public Survey Questionnaire and Response Summary","Survey tool and aggregated public feedback summary by outreach community type.",to do,1790746628702,"9/29/2026, 10:37:08 PM PDT",1819969200000,"9/3/2027, 4:00:00 AM PDT",1791284400000,"10/6/2026, 4:00:00 AM PDT",86bbr25q3,"","[]","[]","[]",null,"TCRS Tasks","[""TCRS""]","WSDOT SMPT and TCRS Space","","","{}","[]","0", "",,NaN,,"901419283607","WSDOT SMPT and TCRS Space > TCRS > TCRS Tasks","",""
86bc9zzv7,https://app.clickup.com/t/86bc9zzv7,"Decision Point","Decision Point 6: Scenario Validation Agreement","WSDOT and Transpo agree on scenario validation approach before implementation.",to do,1790746627061,"9/29/2026, 10:37:07 PM PDT",1800619200000,"1/22/2027, 4:00:00 AM PST",1797336000000,"12/15/2026, 4:00:00 AM PST",86bbr25nw,"","[]","[]","[]",null,"TCRS Tasks","[""TCRS""]","WSDOT SMPT and TCRS Space","","","{}","[]","0", "",,NaN,,"901419283607","WSDOT SMPT and TCRS Space > TCRS > TCRS Tasks","",""
86bbr25nw,https://app.clickup.com/t/86bbr25nw,"Task","TO2 - Task 3. Strategy Development & Scenario Testing","",to do,1788227028678,"8/31/2026, 6:43:48 PM PDT",1809082800000,"4/30/2027, 4:00:00 AM PDT",1793707200000,"11/3/2026, 4:00:00 AM PST",null,"86bc9zzv5,86bc9zzv6,86bc9zzv7,86bc9zzvb,86bc9zzve,86bc9zzvf,86bc9zzvj","[]","[]","[task order 2]",null,"TCRS Tasks","[""TCRS""]","WSDOT SMPT and TCRS Space","","","{}","[]","0", "",,NaN,,"901419283607","WSDOT SMPT and TCRS Space > TCRS > TCRS Tasks","",""
86bc9zzv5,https://app.clickup.com/t/86bc9zzv5,"Decision Point","Decision Point 4: Scenario List Approval","Final list of scenarios approved by WSDOT project management.",to do,1790746627026,"9/29/2026, 10:37:07 PM PDT",1796385600000,"12/4/2026, 4:00:00 AM PST",1793707200000,"11/3/2026, 4:00:00 AM PST",86bbr25nw,"","[]","[]","[]",null,"TCRS Tasks","[""TCRS""]","WSDOT SMPT and TCRS Space","","","{}","[]","0", "",,NaN,,"901419283607","WSDOT SMPT and TCRS Space > TCRS > TCRS Tasks","",""
86bc9zzvb,https://app.clickup.com/t/86bc9zzvb,"Deliverable","Scenario List (Draft & Final)","Hybrid scenario development framework combining top-down policy bundling and bottom-up   screening.",to do,1790746627594,"9/29/2026, 10:37:07 PM PDT",1801828800000,"2/5/2027, 4:00:00 AM PST",1793707200000,"11/3/2026, 4:00:00 AM PST",86bbr25nw,"","[]","[]","[]",null,"TCRS Tasks","[""TCRS""]","WSDOT SMPT and TCRS Space","","","{}","[]","0", "",,NaN,,"901419283607","WSDOT SMPT and TCRS Space > TCRS > TCRS Tasks","",""
86bc9zzve,https://app.clickup.com/t/86bc9zzve,"Deliverable","Scenario Results and Summary","Summary of VisionEval and off-model scenario runs and recommended actions.",to do,1790746627678,"9/29/2026, 10:37:07 PM PDT",1803729600000,"2/27/2027, 4:00:00 AM PST",1801483200000,"2/1/2027, 4:00:00 AM PST",86bbr25nw,"","[]","[]","[]",null,"TCRS Tasks","[""TCRS""]","WSDOT SMPT and TCRS Space","","","{}","[]","0", "",,NaN,,"901419283607","WSDOT SMPT and TCRS Space > TCRS > TCRS Tasks","",""
86bc9zzvj,https://app.clickup.com/t/86bc9zzvj,"Deliverable","Multimodal Transportation Efficiency Strategy Analysis","Context-specific analysis (urban, suburban, rural, travel types, inter-city rail, freight, VMT   energy cost).",to do,1790746628088,"9/29/2026, 10:37:08 PM PDT",1809082800000,"4/30/2027, 4:00:00 AM PDT",1806318000000,"3/29/2027, 4:00:00 AM PDT",86bbr25nw,"","[]","[]","[]",null,"TCRS Tasks","[""TCRS""]","WSDOT SMPT and TCRS Space","","","{}","[]","0", "",,NaN,,"901419283607","WSDOT SMPT and TCRS Space > TCRS > TCRS Tasks","",""
86bch8ny4,https://app.clickup.com/t/86bch8ny4,"Task","Final Outreach Plan","",to do,1791873441985,"10/12/2026, 11:37:21 PM PDT",1793707200000,"11/3/2026, 4:00:00 AM PST",1793185200000,"10/28/2026, 4:00:00 AM PDT",86bc9zzvn,"","[]","[Leslie Langley]","[]",null,"TCRS Tasks","[""TCRS""]","WSDOT SMPT and TCRS Space","","","{}","[]","0", "",,NaN,,"901419283607","WSDOT SMPT and TCRS Space > TCRS > TCRS Tasks","",""
86bch8nkg,https://app.clickup.com/t/86bch8nkg,"Task","WSDOT review of Draft Outreach Plan","",to do,1791873389197,"10/12/2026, 11:36:29 PM PDT",1793098800000,"10/27/2026, 4:00:00 AM PDT",1792580400000,"10/21/2026, 4:00:00 AM PDT",86bc9zzvn,"","[]","[Leslie Langley]","[]",null,"TCRS Tasks","[""TCRS""]","WSDOT SMPT and TCRS Space","","","{}","[]","0", "",,NaN,,"901419283607","WSDOT SMPT and TCRS Space > TCRS > TCRS Tasks","",""
